# Proget gantt chart

How a schedule from MS Project changed from version to version. A marks actual dates.

## Version 1 (saved 2023-11-08)

Note of the change: start

| ID | WBS | Task | Duration | Start | Finish | Predecessors | Total float | Constraint |
| --- | --- | --- | --- | --- | --- | --- | --- | --- |
| 1 | 1 | **Aluminum cylinder heads project** | 272d? | 2023-08-17 | 2024-08-30 |  | 0d |  |
| 2 | 1.1 | **ENGINEERING PHASE** | 52d | 2023-08-17 | 2023-10-27 |  | 220d |  |
| 3 |  | Detailed Engineering - Process | 52d | 2023-08-17 | 2023-10-27 |  | 220d | start no earlier than 2023-08-17 |
| 4 |  | Detailed Engineering - Layout | 48d | 2023-08-23 | 2023-10-27 |  | 220d | start no earlier than 2023-08-23 |
| 5 | 1.2 | **Purchase Process** | 24d? | 2023-10-30 | 2023-11-30 |  | 0d |  |
| 6 | 1.2.1 | **CNC machine (double and single spindle)** | 22d? | 2023-10-30 | 2023-11-28 |  | 88d |  |
| 7 |  | Request for proposals | 2.5d? | 2023-10-30 | 2023-11-01 |  | 93.5d |  |
| 8 |  | Waiting Period | 10d | 2023-11-01 | 2023-11-15 | 7 | 93.5d |  |
| 9 |  | Competitive proposal analysis | 2d? | 2023-11-15 | 2023-11-17 | 8 | 93.5d |  |
| 10 |  | Orders | 2d? | 2023-11-27 | 2023-11-28 | 9 | 88d | start no earlier than 2023-11-27 |
| 11 | 1.2.2 | **Washing station** | 22d | 2023-10-31 | 2023-11-29 |  |  |  |
| 12 |  | Request for proposals | 2.5d | 2023-10-30 | 2023-11-01 |  | 135.5d | start no earlier than 2023-10-30 |
| 13 |  | Waiting Period | 10d | 2023-11-01 | 2023-11-15 | 12 | 135.5d |  |
| 14 |  | Competitive proposal analysis | 2d | 2023-11-15 | 2023-11-17 | 13 | 135.5d |  |
| 15 |  | Orders | 2d | 2023-11-27 | 2023-11-28 |  | 128d | start no earlier than 2023-11-27 |
| 16 | 1.2.3 | **Drilling machine** | 20d? | 2023-11-01 | 2023-11-28 |  | 132d |  |
| 17 |  | Request for proposals | 2.5d? | 2023-11-01 | 2023-11-03 |  | 135.5d | start no earlier than 2023-11-01 |
| 18 |  | Waiting Period | 10d | 2023-11-03 | 2023-11-17 | 17 | 135.5d |  |
| 19 |  | Competitive proposal analysis | 2d? | 2023-11-17 | 2023-11-21 | 18 | 135.5d |  |
| 20 |  | Orders | 2d? | 2023-11-27 | 2023-11-28 | 19 | 132d | start no earlier than 2023-11-27 |
| 21 | 1.2.4 | **Assembly station** | 20d? | 2023-11-01 | 2023-11-28 |  | 116d |  |
| 22 |  | Request for proposals | 2.5d? | 2023-11-01 | 2023-11-03 |  | 203.5d | start no earlier than 2023-11-01 |
| 23 |  | Waiting Period | 10d | 2023-11-03 | 2023-11-17 | 22 | 203.5d |  |
| 24 |  | Competitive proposal analysis | 2d? | 2023-11-17 | 2023-11-21 | 23 | 203.5d |  |
| 25 |  | Orders | 2d? | 2023-11-27 | 2023-11-28 |  | 98d | start no earlier than 2023-11-27 |
| 26 | 1.2.5 | **Gantry loaders** | 19d? | 2023-11-06 | 2023-11-30 |  | 101d |  |
| 27 |  | Request for proposals | 2.5d? | 2023-11-06 | 2023-11-08 |  | 103.5d | start no earlier than 2023-11-06 |
| 28 |  | Waiting Period | 10d | 2023-11-08 | 2023-11-22 | 27 | 103.5d |  |
| 29 |  | Competitive proposal analysis | 2d? | 2023-11-22 | 2023-11-24 | 28 | 103.5d |  |
| 30 |  | Orders | 2d | 2023-11-29 | 2023-11-30 | 29 | 101d | start no earlier than 2023-11-29 |
| 31 | 1.2.6 | **Material handling equipments** | 19d? | 2023-11-06 | 2023-11-30 |  | 66d |  |
| 32 |  | Request for proposals | 2.5d? | 2023-11-06 | 2023-11-08 |  | 68.5d | start no earlier than 2023-11-06 |
| 33 |  | Waiting Period | 10d | 2023-11-08 | 2023-11-22 | 32 | 68.5d |  |
| 34 |  | Competitive proposal analysis | 2d? | 2023-11-22 | 2023-11-24 | 33 | 68.5d |  |
| 35 |  | Orders | 2d? | 2023-11-29 | 2023-11-30 | 34 | 66d | start no earlier than 2023-11-29 |
| 36 | 1.3 | **Equipment Manufacturing Phase** | 132d | 2023-11-29 | 2024-05-30 |  | 66d |  |
| 37 |  | CNC machine (double and single spindle) | 110d | 2023-11-29 | 2024-04-30 | 10 | 88d |  |
| 38 |  | Washing station | 70d | 2023-11-29 | 2024-03-05 | 15 | 128d |  |
| 39 |  | Drilling machine | 66d | 2023-11-29 | 2024-02-28 | 20 | 132d |  |
| 40 |  | Assembly Station | 100d | 2023-11-29 | 2024-04-16 | 25 | 98d |  |
| 41 |  | Gantry loaders | 95d | 2023-12-01 | 2024-04-11 | 30 | 101d |  |
| 42 |  | Material handling equipments | 130d | 2023-12-01 | 2024-05-30 | 35 | 66d | start no earlier than 2023-11-27 |
| 43 |  | Transportation phase | 1d? | 2023-11-27 | 2023-11-27 |  | 199d | start no earlier than 2023-11-27 |
| 44 | 1.5 | **Civil works refurbishment erection phase** | 220d? | 2023-10-30 | 2024-08-30 |  | 0d |  |
| 45 |  | Design Civil Works | 55d | 2023-10-30 | 2024-01-12 |  | 165d |  |
| 46 |  | Permits and Authorizations | 30d | 2023-10-30 | 2023-12-08 |  | 190d |  |
| 47 |  | Site Installation | 15d | 2023-10-30 | 2023-11-17 |  | 205d |  |
| 48 |  | Excavations & Foundations | 30d | 2023-10-30 | 2023-12-08 |  | 190d |  |
| 49 |  | Structural Improvement | 35d | 2023-10-30 | 2023-12-15 |  | 185d |  |
| 50 |  | Industrial Flooring | 35d | 2023-10-30 | 2023-12-15 |  | 185d |  |
| 51 |  | Finishes | 38d | 2023-10-30 | 2023-12-20 |  | 182d |  |
| 52 | 1.5.8 | **On site erection phase** | 220d? | 2023-10-30 | 2024-08-30 |  |  |  |
| 53 | 1.5.8.1 | **OP10** | 30d? | 2023-10-30 | 2023-12-08 |  | 190d |  |
| 54 |  | Mechanical Installation | 30d? | 2023-10-30 | 2023-12-08 |  | 190d |  |
| 55 |  | Connections | 3.4d? | 2023-10-30 | 2023-11-02 |  | 216.6d |  |
| 56 |  | Final Assembly | 6.7d? | 2023-10-30 | 2023-11-07 |  | 213.3d |  |
| 57 | 1.5.8.2 | **OP20** | 30d? | 2023-10-30 | 2023-12-08 |  | 190d |  |
| 58 |  | Mechanical Installation | 30d? | 2023-10-30 | 2023-12-08 |  | 190d |  |
| 59 |  | Connections | 3.4d? | 2023-10-30 | 2023-11-02 |  | 216.6d |  |
| 60 |  | Final Assembly | 6.7d? | 2023-10-30 | 2023-11-07 |  | 213.3d |  |
| 61 | 1.5.8.3 | **OP30** | 30d? | 2023-10-30 | 2023-12-08 |  | 190d |  |
| 62 |  | Mechanical Installation | 30d? | 2023-10-30 | 2023-12-08 |  | 190d |  |
| 63 |  | Connections | 3.4d? | 2023-10-30 | 2023-11-02 |  | 216.6d |  |
| 64 |  | Final Assembly | 6.7d? | 2023-10-30 | 2023-11-07 |  | 213.3d |  |
| 65 | 1.5.8.4 | **OP40** | 30d? | 2023-10-30 | 2023-12-08 |  | 190d |  |
| 66 |  | Mechanical Installation | 30d? | 2023-10-30 | 2023-12-08 |  | 190d |  |
| 67 |  | Connections | 3.4d? | 2023-10-30 | 2023-11-02 |  | 216.6d |  |
| 68 |  | Final Assembly | 6.7d? | 2023-10-30 | 2023-11-07 |  | 213.3d |  |
| 69 | 1.5.8.5 | **OP50** | 30d? | 2023-10-30 | 2023-12-08 |  | 190d |  |
| 70 |  | Mechanical Installation | 30d? | 2023-10-30 | 2023-12-08 |  | 190d |  |

| ID | WBS | Task | Duration | Start | Finish | Total float |
| --- | --- | --- | --- | --- | --- | --- |
| 71 |  | Connections | 3.4d? | 2023-10-30 | 2023-11-02 | 216.6d |
| 72 |  | Final Assembly | 6.7d? | 2023-10-30 | 2023-11-07 | 213.3d |
| 73 | 1.5.8.6 | **OP60** | 30d? | 2023-10-30 | 2023-12-08 | 190d |
| 74 |  | Mechanical Installation | 30d? | 2023-10-30 | 2023-12-08 | 190d |
| 75 |  | Connections | 3.4d? | 2023-10-30 | 2023-11-02 | 216.6d |
| 76 |  | Final Assembly | 6.7d? | 2023-10-30 | 2023-11-07 | 213.3d |
| 77 | 1.5.8.7 | **OP70** | 30d? | 2023-10-30 | 2023-12-08 | 190d |
| 78 |  | Mechanical Installation | 30d? | 2023-10-30 | 2023-12-08 | 190d |
| 79 |  | Connections | 3.4d? | 2023-10-30 | 2023-11-02 | 216.6d |
| 80 |  | Final Assembly | 6.7d? | 2023-10-30 | 2023-11-07 | 213.3d |
| 81 | 1.5.8.8 | **OP80** | 30d? | 2023-10-30 | 2023-12-08 | 190d |
| 82 |  | Mechanical Installation | 30d? | 2023-10-30 | 2023-12-08 | 190d |
| 83 |  | Connections | 3.4d? | 2023-10-30 | 2023-11-02 | 216.6d |
| 84 |  | Final Assembly | 6.7d? | 2023-10-30 | 2023-11-07 | 213.3d |
| 85 | 1.5.8.9 | **OP90** | 30d? | 2023-10-30 | 2023-12-08 | 190d |
| 86 |  | Mechanical Installation | 30d? | 2023-10-30 | 2023-12-08 | 190d |
| 87 |  | Connections | 3.4d? | 2023-10-30 | 2023-11-02 | 216.6d |
| 88 |  | Final Assembly | 6.7d? | 2023-10-30 | 2023-11-07 | 213.3d |
| 89 | 1.5.8.10 | **OP100** | 30d? | 2023-10-30 | 2023-12-08 | 190d |
| 90 |  | Mechanical Installation | 30d? | 2023-10-30 | 2023-12-08 | 190d |
| 91 |  | Connections | 3.4d? | 2023-10-30 | 2023-11-02 | 216.6d |
| 92 |  | Final Assembly | 6.7d? | 2023-10-30 | 2023-11-07 | 213.3d |
| 93 | 1.5.8.11 | **OP110** | 30d? | 2023-10-30 | 2023-12-08 | 190d |
| 94 |  | Mechanical Installation | 30d? | 2023-10-30 | 2023-12-08 | 190d |
| 95 |  | Connections | 3.4d? | 2023-10-30 | 2023-11-02 | 216.6d |
| 96 |  | Final Assembly | 6.7d? | 2023-10-30 | 2023-11-07 | 213.3d |
| 97 |  | Final line testing | 30d? | 2023-10-30 | 2023-12-08 | 190d |

## Version 2 (saved 2023-11-08)

Note of the change: test

Last finish stays 2024-08-30.

Changed:

| ID | Task | Predecessors |
| --- | --- | --- |
| 5 | **Purchase Process** | none → 2 |

## Version 3 (saved 2023-11-08)

Note of the change: adding predecessors

Last finish 2024-08-30 → 2024-12-26 (+118d).

Changed:

| ID | Task | Start | Finish | Duration | Total float | Predecessors |
| --- | --- | --- | --- | --- | --- | --- |
| 1 | **Aluminum cylinder heads project** |  | 2024-08-30 → 2024-12-26 (+118d) | 272d? → 355.1d? | 0d → -48d |  |
| 2 | **ENGINEERING PHASE** |  | 2023-10-27 → 2024-01-03 (+68d) | 52d → 100d | 0d → -48d |  |
| 4 | Detailed Engineering - Layout | 2023-08-23 → 2023-10-30 (+68d) | 2023-10-27 → 2024-01-03 (+68d) |  | 0d → -48d | none → 3 |
| 5 | **Purchase Process** |  | 2023-11-30 → 2024-01-26 (+57d) | 24d? → 64.5d? |  |  |
| 6 | **CNC machine (double and single spindle)** | 2023-10-30 → 2024-01-04 (+66d) | 2023-11-28 → 2024-01-26 (+59d) | 22d? → 16.5d? | 88d → 127.6d |  |
| 7 | Request for proposals | 2023-10-30 → 2024-01-04 (+66d) | 2023-11-01 → 2024-01-08 (+68d) |  | 93.5d → 44.5d |  |
| 8 | Waiting Period | 2023-11-01 → 2024-01-08 (+68d) | 2023-11-15 → 2024-01-22 (+68d) |  | 93.5d → 44.5d |  |
| 9 | Competitive proposal analysis | 2023-11-15 → 2024-01-22 (+68d) | 2023-11-17 → 2024-01-24 (+68d) |  | 93.5d → 44.5d |  |
| 10 | Orders | 2023-11-27 → 2024-01-24 (+58d) | 2023-11-28 → 2024-01-26 (+59d) |  | 88d → 44.5d |  |
| 15 | Orders |  |  |  | 128d → 127d | none → 14 |
| 16 | **Drilling machine** | 2023-11-01 → 2024-01-04 (+64d) | 2023-11-28 → 2024-01-26 (+59d) | 20d? → 16.5d? | 132d → 171.6d |  |
| 17 | Request for proposals | 2023-11-01 → 2024-01-04 (+64d) | 2023-11-03 → 2024-01-08 (+66d) |  | 135.5d → 88.5d |  |
| 18 | Waiting Period | 2023-11-03 → 2024-01-08 (+66d) | 2023-11-17 → 2024-01-22 (+66d) |  | 135.5d → 88.5d |  |
| 19 | Competitive proposal analysis | 2023-11-17 → 2024-01-22 (+66d) | 2023-11-21 → 2024-01-24 (+64d) |  | 135.5d → 88.5d |  |
| 20 | Orders | 2023-11-27 → 2024-01-24 (+58d) | 2023-11-28 → 2024-01-26 (+59d) |  | 132d → 88.5d |  |
| 21 | **Assembly station** | 2023-11-01 → 2024-01-04 (+64d) | 2023-11-28 → 2024-01-26 (+59d) | 20d? → 16.5d? | 116d → 137.6d |  |
| 22 | Request for proposals | 2023-11-01 → 2024-01-04 (+64d) | 2023-11-03 → 2024-01-08 (+66d) |  | 203.5d → 54.5d |  |
| 23 | Waiting Period | 2023-11-03 → 2024-01-08 (+66d) | 2023-11-17 → 2024-01-22 (+66d) |  | 203.5d → 54.5d |  |
| 24 | Competitive proposal analysis | 2023-11-17 → 2024-01-22 (+66d) | 2023-11-21 → 2024-01-24 (+64d) |  | 203.5d → 54.5d |  |
| 25 | Orders | 2023-11-27 → 2024-01-24 (+58d) | 2023-11-28 → 2024-01-26 (+59d) |  | 98d → 54.5d | none → 24 |
| 26 | **Gantry loaders** | 2023-11-06 → 2024-01-04 (+59d) | 2023-11-30 → 2024-01-26 (+57d) | 19d? → 16.5d? | 101d → 142.6d |  |
| 27 | Request for proposals | 2023-11-06 → 2024-01-04 (+59d) | 2023-11-08 → 2024-01-08 (+61d) |  | 103.5d → 59.5d |  |
| 28 | Waiting Period | 2023-11-08 → 2024-01-08 (+61d) | 2023-11-22 → 2024-01-22 (+61d) |  | 103.5d → 59.5d |  |
| 29 | Competitive proposal analysis | 2023-11-22 → 2024-01-22 (+61d) | 2023-11-24 → 2024-01-24 (+61d) |  | 103.5d → 59.5d |  |
| 30 | Orders | 2023-11-29 → 2024-01-24 (+56d) | 2023-11-30 → 2024-01-26 (+57d) |  | 101d → 59.5d |  |
| 31 | **Material handling equipments** | 2023-11-06 → 2024-01-04 (+59d) | 2023-11-30 → 2024-01-26 (+57d) | 19d? → 16.5d? | 66d → 107.6d |  |
| 32 | Request for proposals | 2023-11-06 → 2024-01-04 (+59d) | 2023-11-08 → 2024-01-08 (+61d) |  | 68.5d → 24.5d |  |
| 33 | Waiting Period | 2023-11-08 → 2024-01-08 (+61d) | 2023-11-22 → 2024-01-22 (+61d) |  | 68.5d → 24.5d |  |
| 34 | Competitive proposal analysis | 2023-11-22 → 2024-01-22 (+61d) | 2023-11-24 → 2024-01-24 (+61d) |  | 68.5d → 24.5d |  |
| 35 | Orders | 2023-11-29 → 2024-01-24 (+56d) | 2023-11-30 → 2024-01-26 (+57d) |  | 66d → 24.5d |  |
| 36 | **Equipment Manufacturing Phase** |  | 2024-05-30 → 2024-07-26 (+57d) | 132d → 172.5d | 66d → 107.6d |  |
| 37 | CNC machine (double and single spindle) | 2023-11-29 → 2024-01-26 (+58d) | 2024-04-30 → 2024-06-28 (+59d) |  | 88d → 44.5d |  |
| 39 | Drilling machine | 2023-11-29 → 2024-01-26 (+58d) | 2024-02-28 → 2024-04-29 (+61d) |  | 132d → 88.5d |  |
| 40 | Assembly Station | 2023-11-29 → 2024-01-26 (+58d) | 2024-04-16 → 2024-06-14 (+59d) |  | 98d → 54.5d |  |
| 41 | Gantry loaders | 2023-12-01 → 2024-01-26 (+56d) | 2024-04-11 → 2024-06-07 (+57d) |  | 101d → 59.5d |  |
| 42 | Material handling equipments | 2023-12-01 → 2024-01-26 (+56d) | 2024-05-30 → 2024-07-26 (+57d) |  | 66d → 24.5d |  |
| 43 | Transportation phase | 2023-11-27 → 2024-07-26 (+242d) | 2023-11-27 → 2024-07-29 (+245d) |  | 199d → 24.5d | none → 36 |
| 44 | **Civil works refurbishment erection phase** |  | 2024-08-30 → 2024-11-14 (+76d) | 220d? → 273.1d? |  |  |
| 45 | Design Civil Works | 2023-10-30 → 2024-01-04 (+66d) | 2024-01-12 → 2024-03-20 (+68d) |  | 165d → 0d | none → 4 |
| 46 | Permits and Authorizations | 2023-10-30 → 2024-03-21 (+143d) | 2023-12-08 → 2024-05-01 (+145d) |  | 190d → 0d | none → 45 |
| 47 | Site Installation | 2023-10-30 → 2024-03-21 (+143d) | 2023-11-17 → 2024-04-10 (+145d) |  | 205d → 37d | none → 45 |
| 48 | Excavations & Foundations | 2023-10-30 → 2024-05-02 (+185d) | 2023-12-08 → 2024-06-12 (+187d) |  | 190d → 0d | none → 46, 47 |
| 49 | Structural Improvement | 2023-10-30 → 2024-06-13 (+227d) | 2023-12-15 → 2024-07-31 (+229d) |  | 185d → 0d | none → 48 |
| 50 | Industrial Flooring | 2023-10-30 → 2024-08-01 (+276d) | 2023-12-15 → 2024-09-18 (+278d) |  | 185d → 0d | none → 48, 49 |
| 51 | Finishes | 2023-10-30 → 2024-09-19 (+325d) | 2023-12-20 → 2024-11-11 (+327d) |  | 182d → 32.1d | none → 50 |
| 53 | **OP10** | 2023-10-30 → 2024-09-19 (+325d) | 2023-12-08 → 2024-11-14 (+342d) | 30d? → 40.1d? | 190d → 0d | none → 50 |
| 54 | Mechanical Installation | 2023-10-30 → 2024-09-19 (+325d) | 2023-12-08 → 2024-10-30 (+327d) |  | 190d → 0d |  |
| 55 | Connections | 2023-10-30 → 2024-10-31 (+367d) | 2023-11-02 → 2024-11-05 (+369d) |  | 216.6d → 0d | none → 54 |
| 56 | Final Assembly | 2023-10-30 → 2024-11-05 (+372d) | 2023-11-07 → 2024-11-14 (+373d) |  | 213.3d → 0d | none → 55 |
| 57 | **OP20** | 2023-10-30 → 2024-09-19 (+325d) | 2023-12-08 → 2024-11-14 (+342d) | 30d? → 40.1d? | 190d → 0d | none → 50 |
| 58 | Mechanical Installation | 2023-10-30 → 2024-09-19 (+325d) | 2023-12-08 → 2024-10-30 (+327d) |  | 190d → 10.1d |  |
| 59 | Connections | 2023-10-30 → 2024-10-31 (+367d) | 2023-11-02 → 2024-11-05 (+369d) |  | 216.6d → 6.7d | none → 54 |
| 60 | Final Assembly | 2023-10-30 → 2024-11-05 (+372d) | 2023-11-07 → 2024-11-14 (+373d) |  | 213.3d → 0d | none → 55 |
| 61 | **OP30** | 2023-10-30 → 2024-09-19 (+325d) | 2023-12-08 → 2024-11-14 (+342d) | 30d? → 40.1d? | 190d → 0d | none → 50 |
| 62 | Mechanical Installation | 2023-10-30 → 2024-09-19 (+325d) | 2023-12-08 → 2024-10-30 (+327d) |  | 190d → 10.1d |  |
| 63 | Connections | 2023-10-30 → 2024-10-31 (+367d) | 2023-11-02 → 2024-11-05 (+369d) |  | 216.6d → 6.7d | none → 54 |
| 64 | Final Assembly | 2023-10-30 → 2024-11-05 (+372d) | 2023-11-07 → 2024-11-14 (+373d) |  | 213.3d → 0d | none → 55 |
| 65 | **OP40** | 2023-10-30 → 2024-09-19 (+325d) | 2023-12-08 → 2024-11-14 (+342d) | 30d? → 40.1d? | 190d → 0d | none → 50 |
| 66 | Mechanical Installation | 2023-10-30 → 2024-09-19 (+325d) | 2023-12-08 → 2024-10-30 (+327d) |  | 190d → 10.1d |  |
| 67 | Connections | 2023-10-30 → 2024-10-31 (+367d) | 2023-11-02 → 2024-11-05 (+369d) |  | 216.6d → 6.7d | none → 54 |
| 68 | Final Assembly | 2023-10-30 → 2024-11-05 (+372d) | 2023-11-07 → 2024-11-14 (+373d) |  | 213.3d → 0d | none → 55 |
| 69 | **OP50** | 2023-10-30 → 2024-09-19 (+325d) | 2023-12-08 → 2024-11-14 (+342d) | 30d? → 40.1d? | 190d → 0d | none → 50 |
| 70 | Mechanical Installation | 2023-10-30 → 2024-09-19 (+325d) | 2023-12-08 → 2024-10-30 (+327d) |  | 190d → 10.1d |  |
| 71 | Connections | 2023-10-30 → 2024-10-31 (+367d) | 2023-11-02 → 2024-11-05 (+369d) |  | 216.6d → 6.7d | none → 54 |
| 72 | Final Assembly | 2023-10-30 → 2024-11-05 (+372d) | 2023-11-07 → 2024-11-14 (+373d) |  | 213.3d → 0d | none → 55 |
| 73 | **OP60** | 2023-10-30 → 2024-09-19 (+325d) | 2023-12-08 → 2024-11-14 (+342d) | 30d? → 40.1d? | 190d → 0d | none → 50 |
| 74 | Mechanical Installation | 2023-10-30 → 2024-09-19 (+325d) | 2023-12-08 → 2024-10-30 (+327d) |  | 190d → 10.1d |  |
| 75 | Connections | 2023-10-30 → 2024-10-31 (+367d) | 2023-11-02 → 2024-11-05 (+369d) |  | 216.6d → 6.7d | none → 54 |
| 76 | Final Assembly | 2023-10-30 → 2024-11-05 (+372d) | 2023-11-07 → 2024-11-14 (+373d) |  | 213.3d → 0d | none → 55 |
| 77 | **OP70** | 2023-10-30 → 2024-09-19 (+325d) | 2023-12-08 → 2024-11-14 (+342d) | 30d? → 40.1d? | 190d → 0d | none → 50 |

| ID | Task | Start | Finish | Duration | Total float | Predecessors |
| --- | --- | --- | --- | --- | --- | --- |
| 78 | Mechanical Installation | 2023-10-30 → 2024-09-19 (+325d) | 2023-12-08 → 2024-10-30 (+327d) |  | 190d → 10.1d |  |
| 79 | Connections | 2023-10-30 → 2024-10-31 (+367d) | 2023-11-02 → 2024-11-05 (+369d) |  | 216.6d → 6.7d | none → 54 |
| 80 | Final Assembly | 2023-10-30 → 2024-11-05 (+372d) | 2023-11-07 → 2024-11-14 (+373d) |  | 213.3d → 0d | none → 55 |
| 81 | **OP80** | 2023-10-30 → 2024-09-19 (+325d) | 2023-12-08 → 2024-11-14 (+342d) | 30d? → 40.1d? | 190d → 0d | none → 50 |
| 82 | Mechanical Installation | 2023-10-30 → 2024-09-19 (+325d) | 2023-12-08 → 2024-10-30 (+327d) |  | 190d → 10.1d |  |
| 83 | Connections | 2023-10-30 → 2024-10-31 (+367d) | 2023-11-02 → 2024-11-05 (+369d) |  | 216.6d → 6.7d | none → 54 |
| 84 | Final Assembly | 2023-10-30 → 2024-11-05 (+372d) | 2023-11-07 → 2024-11-14 (+373d) |  | 213.3d → 0d | none → 55 |
| 85 | **OP90** | 2023-10-30 → 2024-09-19 (+325d) | 2023-12-08 → 2024-11-14 (+342d) | 30d? → 40.1d? | 190d → 0d | none → 50 |
| 86 | Mechanical Installation | 2023-10-30 → 2024-09-19 (+325d) | 2023-12-08 → 2024-10-30 (+327d) |  | 190d → 10.1d |  |
| 87 | Connections | 2023-10-30 → 2024-10-31 (+367d) | 2023-11-02 → 2024-11-05 (+369d) |  | 216.6d → 6.7d | none → 54 |
| 88 | Final Assembly | 2023-10-30 → 2024-11-05 (+372d) | 2023-11-07 → 2024-11-14 (+373d) |  | 213.3d → 0d | none → 55 |
| 89 | **OP100** | 2023-10-30 → 2024-09-19 (+325d) | 2023-12-08 → 2024-11-14 (+342d) | 30d? → 40.1d? | 190d → 0d | none → 50 |
| 90 | Mechanical Installation | 2023-10-30 → 2024-09-19 (+325d) | 2023-12-08 → 2024-10-30 (+327d) |  | 190d → 10.1d |  |
| 91 | Connections | 2023-10-30 → 2024-10-31 (+367d) | 2023-11-02 → 2024-11-05 (+369d) |  | 216.6d → 6.7d | none → 54 |
| 92 | Final Assembly | 2023-10-30 → 2024-11-05 (+372d) | 2023-11-07 → 2024-11-14 (+373d) |  | 213.3d → 0d | none → 55 |
| 93 | **OP110** | 2023-10-30 → 2024-09-19 (+325d) | 2023-12-08 → 2024-11-14 (+342d) | 30d? → 40.1d? | 190d → 0d | none → 50 |
| 94 | Mechanical Installation | 2023-10-30 → 2024-09-19 (+325d) | 2023-12-08 → 2024-10-30 (+327d) |  | 190d → 10.1d |  |
| 95 | Connections | 2023-10-30 → 2024-10-31 (+367d) | 2023-11-02 → 2024-11-05 (+369d) |  | 216.6d → 6.7d | none → 54 |
| 96 | Final Assembly | 2023-10-30 → 2024-11-05 (+372d) | 2023-11-07 → 2024-11-14 (+373d) |  | 213.3d → 0d | none → 55 |
| 97 | Final line testing | 2023-10-30 → 2024-11-14 (+381d) | 2023-12-08 → 2024-12-26 (+384d) |  | 190d → 0d | none → 53, 57, 61, 65, 69, 73, 77, 81, 85, 89, 93 |

## Version 4 (saved 2023-11-08)

Note of the change: adding successors

Last finish stays 2024-12-26.

Changed:

| ID | Task | Predecessors |
| --- | --- | --- |
| 53 | **OP10** | 50 → 50, 36 |
| 57 | **OP20** | 50 → 50, 36 |
| 61 | **OP30** | 50 → 50, 36 |
| 65 | **OP40** | 50 → 50, 36 |
| 69 | **OP50** | 50 → 50, 36 |
| 73 | **OP60** | 50 → 50, 36 |
| 77 | **OP70** | 50 → 50, 36 |
| 81 | **OP80** | 50 → 50, 36 |
| 85 | **OP90** | 50 → 50, 36 |
| 89 | **OP100** | 50 → 50, 36 |
| 93 | **OP110** | 50 → 50, 36 |
